# AIBC

Schedule from MS Project, 2009-03-16 to 2009-07-03.
asiainfo

## Calendars

- 标准: Mon-Fri 08:00-12:00, 13:00-17:00; Sat-Sun off.

## Resources

| Resource | Group |
| --- | --- |
| 冯哲庄 | AIBC |
| 戴志辉 | AIBC |
| 阮泽鑫 | AIBC |
| 高静伟 | AIBC |
| 朱元 | AIBC |

## Schedule

| ID | WBS | Task | Duration | Start | Finish | Predecessors | Total slack | Free slack | Constraint | Resources | Work |
| --- | --- | --- | --- | --- | --- | --- | --- | --- | --- | --- | --- |
| 1 | 1 | **AIBC可移植层（APL）开发** | 30d? | 2009-03-16 | 2009-04-24 |  | 10d |  |  |  | 296h |
| 2 | 1.1 | apl设计文档 | 10d? | 2009-03-16 | 2009-03-27 |  | 15d | 0d | finish no earlier than 2009-03-27 | 冯哲庄 | 80h |
| 3 | 1.2 | apl详设文档评审 | 1d? | 2009-03-25 | 2009-03-25 |  | 12d | 2d | start no earlier than 2009-03-25 | 冯哲庄 | 8h |
| 4 | 1.3 | apl编码开发 | 10d? | 2009-03-30 | 2009-04-10 | 3 | 10d | 0d | finish no earlier than 2009-04-10 | 冯哲庄 | 80h |
| 5 | 1.4 | apl代码评审 | 1d | 2009-04-08 | 2009-04-08 |  | 62d |  | start no earlier than 2009-04-08 | 冯哲庄 | 8h |
| 6 | 1.5 | apl单元测试 | 10d? | 2009-04-06 | 2009-04-17 | 2 | 50d | 0d | start no earlier than 2009-04-06 | 阮泽鑫; 冯哲庄 [20%] | 80h |
| 7 | 1.6 | apl使用手册 | 5d? | 2009-04-20 | 2009-04-24 | 6 | 50d |  | start no earlier than 2009-04-20 | 阮泽鑫 | 40h |
| 8 | 2 | **AIBC类库（ACL）开发** | 45d? | 2009-03-30 | 2009-05-29 |  | 10d |  |  |  | 488.73h |
| 9 | 2.1 | acl设计文档 | 9d? | 2009-03-30 | 2009-04-09 | 2 | 10d | 0d | finish no earlier than 2009-04-09 | 戴志辉 | 72h |
| 10 | 2.2 | acl设计文档评审 | 1d? | 2009-04-10 | 2009-04-10 | 9 | 10d | 0d | start no earlier than 2009-04-10 | 戴志辉 | 8h |
| 11 | 2.3 | acl编码开发 | 30d? | 2009-04-13 | 2009-05-22 | 4, 10 | 10d | 0d | finish no earlier than 2009-05-08 | 戴志辉 [90%]; 阮泽鑫 [20%] | 176h |
| 12 | 2.4 | acl单元测试 | 30d? | 2009-04-13 | 2009-05-22 | 9 | 25d | 0d | finish no earlier than 2009-05-22 | 阮泽鑫 [80%]; 戴志辉 [10%] | 192.73h |
| 13 | 2.5 | acl使用手册 | 5d? | 2009-05-25 | 2009-05-29 | 12 | 25d |  | start no earlier than 2009-05-18 | 阮泽鑫 | 40h |
| 14 | 3 | **AIBC应用框架（AAF）开发** | 40d? | 2009-05-11 | 2009-07-03 |  | 0d |  |  |  | 454.55h |
| 15 | 3.1 | aaf设计文档 | 10d? | 2009-05-11 | 2009-05-22 | 2, 9 | 0d |  | finish no earlier than 2009-05-22 | 戴志辉 | 80h |
| 16 | 3.2 | aaf编码开发 | 20d? | 2009-05-25 | 2009-06-19 | 15, 4, 11 | 10d |  | finish no earlier than 2009-06-19 | 戴志辉 [80%]; 阮泽鑫 [20%] | 142.55h |
| 17 | 3.3 | aaf单元测试 | 25d? | 2009-05-25 | 2009-06-26 | 15 | 0d |  | start no earlier than 2009-05-25 | 阮泽鑫 [80%]; 戴志辉 [20%] | 192h |
| 18 | 3.4 | aaf使用手册 | 5d? | 2009-06-29 | 2009-07-03 | 17 | 0d |  | start no earlier than 2009-06-29 | 阮泽鑫 | 40h |
